# Cycles_develpment_v1.3

How a schedule from MS Project changed from version to version. A marks actual dates.

## Version 1 (saved 2008-08-18)

Note of the change: git-svn-id: https://subversion.cbd.int/svn/repo/Bch/Help@1538 ca237ed5-24d0-bc44-ad4d-3f151b82840b

| ID | WBS | Task | Duration | Start | Finish | Predecessors | Complete | Constraint |
| --- | --- | --- | --- | --- | --- | --- | --- | --- |
| 1 | 1 | **CYCLE 1.0.0. DEVELOPMENT** | 4d | 2008-02-19 A | 2008-02-22 A |  | 100% |  |
| 2 | 1.1 | **Content integration** | 1d | 2008-02-19 A | 2008-02-19 A |  | 100% |  |
| 3 |  | Topics first level & training modules (link to moodle) | 1d | 2008-02-19 A | 2008-02-19 A |  | 100% | start no earlier than 2008-02-19 |
| 4 | 1.2 | **Help System Building & Review** | 3d | 2008-02-20 A | 2008-02-22 A |  | 100% |  |
| 5 |  | Building | 1d | 2008-02-20 A | 2008-02-20 A |  | 100% | start no earlier than 2008-02-20 |
| 6 |  | Document & Review | 1d | 2008-02-21 A | 2008-02-21 A | 5 | 100% |  |
| 7 |  | Backup | 1d | 2008-02-22 A | 2008-02-22 A |  | 100% |  |
| 8 |  | Publish | 0d | 2008-02-22 A | 2008-02-22 A |  | 100% |  |
| 9 | 2 | **CYCLE 1.1.0. DEVELOPMENT** | 5d | 2008-02-25 A | 2008-02-29 A |  | 100% |  |
| 10 | 2.1 | **Text Pre-process** | 1d | 2008-02-25 A | 2008-02-25 A |  | 100% |  |
| 11 |  | Formatting FR,SP (MO1,Mo2) | 1d | 2008-02-25 A | 2008-02-25 A |  | 100% | start no earlier than 2008-02-25 |
| 12 | 2.2 | **Content integration** | 2d | 2008-02-26 A | 2008-02-27 A | 10 | 100% |  |
| 13 |  | Training materials (complete) | 1d | 2008-02-26 A | 2008-02-26 A |  | 100% | start no earlier than 2008-02-26 |
| 14 |  | EN - MO1 - MO4 Complete | 1d | 2008-02-27 A | 2008-02-27 A | 13 | 100% | start no earlier than 2008-02-26 |
| 15 | 2.3 | **Help System Building & Review** | 3d | 2008-02-27 A | 2008-02-29 A |  | 100% |  |
| 16 |  | Building | 1d | 2008-02-27 A | 2008-02-27 A |  | 100% | start no earlier than 2008-02-27 |
| 17 |  | Document & Review | 1d | 2008-02-28 A | 2008-02-28 A | 16 | 100% |  |
| 18 |  | Backup | 1d | 2008-02-29 A | 2008-02-29 A | 17 | 100% | start no earlier than 2008-02-29 |
| 19 |  | Publish | 0d | 2008-02-29 A | 2008-02-29 A |  | 100% | start no earlier than 2008-02-29 |
| 20 | 3 | **CYCLE 1.2.0. DEVELOPMENT** | 5d | 2008-03-03 A | 2008-03-07 A |  | 100% |  |
| 21 | 3.1 | **Text Pre-process** | 3d | 2008-03-03 A | 2008-03-05 A |  | 100% |  |
| 22 |  | Formatting FR (MO3 & 4) | 1d | 2008-03-03 A | 2008-03-03 A |  | 100% | start no earlier than 2008-03-03 |
| 23 |  | Formatting EN FR SP MO10 | 1d | 2008-03-05 A | 2008-03-05 A |  | 100% | finish no earlier than 2008-03-05 |
| 24 | 3.2 | **Content integration** | 3d | 2008-03-04 A | 2008-03-06 A |  | 100% |  |
| 25 |  | EN FR SP MO10 | 1d | 2008-03-04 A | 2008-03-04 A |  | 100% | start no earlier than 2008-03-04 |
| 26 |  | FR MO3 | 1d | 2008-03-05 A | 2008-03-05 A |  | 100% | finish no earlier than 2008-03-05 |
| 27 |  | FR MO4 | 1d | 2008-03-06 A | 2008-03-06 A |  | 100% | start no earlier than 2008-03-06 |
| 28 | 3.3 | **Procedure & documentation** | 1d | 2008-03-05 A | 2008-03-05 A |  | 100% |  |
| 29 |  | Procedures | 1d | 2008-03-05 A | 2008-03-05 A |  | 100% | start no earlier than 2008-03-05 |
| 30 | 3.4 | **Help System Building & Review** | 2d | 2008-03-06 A | 2008-03-07 A |  | 100% |  |
| 31 |  | Building (1st level FR topics) | 1d | 2008-03-06 A | 2008-03-06 A |  | 100% | start no earlier than 2008-03-06 |
| 32 |  | Document & Review | 1d | 2008-03-06 A | 2008-03-06 A |  | 100% | start no earlier than 2008-03-06 |
| 33 |  | Backup | 1d | 2008-03-07 A | 2008-03-07 A | 32 | 100% | start no earlier than 2008-03-07 |
| 34 |  | Publish | 0d | 2008-03-07 A | 2008-03-07 A |  | 100% | start no earlier than 2008-03-07 |
| 35 | 4 | **CYCLE 1.3.0. DEVELOPMENT** | 4d | 2008-03-10 A | 2008-03-13 A |  | 100% |  |
| 36 | 4.1 | **Text Pre-Process & revision** | 1d | 2008-03-10 A | 2008-03-10 A |  | 100% |  |
| 37 |  | FR - EN MO 3 & 4 Images fixed | 1d | 2008-03-10 A | 2008-03-10 A |  | 100% | start no earlier than 2008-03-10 |
| 38 |  | En Training materials Links revision | 1d | 2008-03-10 A | 2008-03-10 A |  | 100% | start no earlier than 2008-03-10 |
| 39 | 4.2 | **Content integration** | 1d | 2008-03-11 A | 2008-03-11 A |  | 100% |  |
| 40 |  | FR - EN MO 3 & 4 Images fixed | 1d | 2008-03-11 A | 2008-03-11 A |  | 100% | start no earlier than 2008-03-11 |
| 41 |  | EN Training materials | 1d | 2008-03-11 A | 2008-03-11 A |  | 100% | start no earlier than 2008-03-11 |
| 42 | 4.3 | **Procedure & documentation** | 1d | 2008-03-10 A | 2008-03-10 A |  | 100% |  |
| 43 |  | Draft Lessons Learned | 1d | 2008-03-10 A | 2008-03-10 A |  | 100% | start no earlier than 2008-03-10 |
| 44 | 4.4 | **Help System Building & Review** | 3d | 2008-03-11 A | 2008-03-13 A |  | 100% |  |
| 45 |  | Building | 1d | 2008-03-11 A | 2008-03-11 A |  | 100% | start no earlier than 2008-03-11 |
| 46 |  | Document & Review | 1d | 2008-03-12 A | 2008-03-12 A |  | 100% | start no earlier than 2008-03-12 |
| 47 |  | Backup | 1d | 2008-03-13 A | 2008-03-13 A |  | 100% | start no earlier than 2008-03-13 |
| 48 |  | Publish | 0d | 2008-03-13 A | 2008-03-13 A |  | 100% | start no earlier than 2008-03-13 |
| 49 | 5 | **CYCLE 2.0.0.** | 36d | 2008-03-24 A | 2008-05-09 A |  | 100% |  |
| 50 | 5.1 | **Text Pre-process** | 12d | 2008-03-31 A | 2008-04-15 A |  | 100% |  |
| 51 |  | Translate SP (CBD Review) | 1d | 2008-03-31 A | 2008-03-31 A |  | 100% | start no earlier than 2008-03-31 |
| 52 |  | Formatting RU MO01& MO2 | 1d | 2008-03-31 A | 2008-03-31 A |  | 100% | start no earlier than 2008-03-31 |
| 53 |  | Formatting RU AR (MO1-MO4 & MO10) | 1d | 2008-04-07 A | 2008-04-07 A |  | 100% | start no earlier than 2008-04-07 |
| 54 |  | Formatting CH (MO1-MO4 & MO10) | 2d | 2008-04-14 A | 2008-04-15 A |  | 100% | start no earlier than 2008-04-14 |
| 55 | 5.2 | **Software development** | 36d | 2008-03-24 A | 2008-05-09 A |  | 100% |  |
| 56 |  | Help System (Table of content) path Highlight | 4d | 2008-03-24 A | 2008-03-27 A |  | 100% | start no earlier than 2008-03-24 |
| 57 |  | Plug-in Highlight (improved) | 10d | 2008-04-28 A | 2008-05-09 A |  | 100% | start no earlier than 2008-04-28 |
| 58 |  | Help System Template | 10d | 2008-04-28 A | 2008-05-09 A |  | 100% | finish no earlier than 2008-05-09 |
| 59 | 5.3 | **CBD MO document review** | 13d | 2008-03-26 A | 2008-04-10 A |  | 100% |  |
| 60 |  | Examine MO 1-4 & MO10 CBD Changes | 4d | 2008-03-26 A | 2008-03-29 A |  | 100% | start no earlier than 2008-03-26 |
| 61 |  | Help System impact | 2d | 2008-04-09 A | 2008-04-10 A |  | 100% | start no earlier than 2008-04-09 |
| 62 | 5.4 | **Contact RA AR CH Native Speakers** | 1d | 2008-03-24 A | 2008-03-25 A |  | 100% |  |
| 63 |  | AR | 0d | 2008-03-24 A | 2008-03-24 A |  | 100% | start no earlier than 2008-03-24 |
| 64 |  | RU | 0d | 2008-03-25 A | 2008-03-25 A |  | 100% | start no earlier than 2008-03-25 |
| 65 |  | CH | 0d | 2008-03-25 A | 2008-03-25 A |  | 100% | start no earlier than 2008-03-25 |
| 66 | 5.5 | **Send RA (last CBD MO Review)** | 25d | 2008-03-26 A | 2008-04-29 A |  | 100% |  |
| 67 | 5.5.1 | **Send FR** | 13d | 2008-03-26 A | 2008-04-11 A |  | 100% |  |
| 68 |  | MO1,2 & 3 | 0d | 2008-03-26 A | 2008-03-26 A |  | 100% | start no earlier than 2008-03-26 |
| 69 |  | MO4 | 0d | 2008-04-10 A | 2008-04-10 A |  | 100% | start no earlier than 2008-04-10 |
| 70 |  | MO10 | 0d | 2008-04-11 A | 2008-04-11 A |  | 100% | start no earlier than 2008-04-11 |

| ID | WBS | Task | Duration | Start | Finish | Complete | Constraint |
| --- | --- | --- | --- | --- | --- | --- | --- |
| 71 | 5.5.2 | **Send RU** | 15d | 2008-04-01 A | 2008-04-22 A | 100% |  |
| 72 |  | MO1 & MO2 | 0d | 2008-04-01 A | 2008-04-01 A | 100% | start no earlier than 2008-04-01 |
| 73 |  | MO3 | 0d | 2008-04-10 A | 2008-04-10 A | 100% | start no earlier than 2008-04-10 |
| 74 |  | MO4 | 0d | 2008-04-22 A | 2008-04-22 A | 100% | start no earlier than 2008-04-22 |
| 75 | 5.5.3 | **Send AR** | 21d | 2008-03-31 A | 2008-04-29 A | 100% |  |
| 76 |  | MO1 | 0d | 2008-03-31 A | 2008-03-31 A | 100% | start no earlier than 2008-03-31 |
| 77 |  | MO2 | 0d | 2008-04-07 A | 2008-04-07 A | 100% | start no earlier than 2008-04-07 |
| 78 |  | MO3 | 0d | 2008-04-21 A | 2008-04-21 A | 100% | start no earlier than 2008-04-21 |
| 79 |  | MO4 | 0d | 2008-04-29 A | 2008-04-29 A | 100% | start no earlier than 2008-04-29 |
| 80 |  | MO10 | 0d | 2008-04-11 A | 2008-04-11 A | 100% | start no earlier than 2008-04-11 |
| 81 | 5.5.4 | **Send SP** | 5d | 2008-03-27 A | 2008-04-02 A | 100% |  |
| 82 |  | MO1 | 0d | 2008-03-27 A | 2008-03-27 A | 100% | start no earlier than 2008-03-27 |
| 83 |  | MO2 | 0d | 2008-04-02 A | 2008-04-02 A | 100% | start no earlier than 2008-04-02 |
| 84 | 5.6 | **Receive RA (last CBD MO Review)** | 20d | 2008-03-29 A | 2008-04-25 A | 100% |  |
| 85 | 5.6.1 | **Receive FR** | 16d | 2008-03-29 A | 2008-04-21 A | 100% |  |
| 86 |  | MO1 | 0d | 2008-03-29 A | 2008-03-29 A | 100% | start no earlier than 2008-03-29 |
| 87 |  | MO2 | 0d | 2008-03-31 A | 2008-03-31 A | 100% | start no earlier than 2008-03-31 |
| 88 |  | MO3 | 0d | 2008-04-07 A | 2008-04-07 A | 100% | start no earlier than 2008-04-07 |
| 89 |  | MO4 | 0d | 2008-04-21 A | 2008-04-21 A | 100% | start no earlier than 2008-04-21 |
| 90 |  | MO10 | 0d | 2008-04-21 A | 2008-04-21 A | 100% | start no earlier than 2008-04-21 |
| 91 | 5.6.2 | **Receive RU** | 1d | 2008-04-04 A | 2008-04-07 A | 100% |  |
| 92 |  | MO1 | 0d | 2008-04-07 A | 2008-04-07 A | 100% | start no earlier than 2008-04-07 |
| 93 |  | MO2 | 0d | 2008-04-04 A | 2008-04-04 A | 100% | start no earlier than 2008-04-04 |
| 94 |  | MO3 | 0d | 2008-04-07 A | 2008-04-07 A | 100% | start no earlier than 2008-04-07 |
| 95 | 5.6.3 | **Receive AR** | 9d | 2008-04-08 A | 2008-04-21 A | 100% |  |
| 96 |  | MO1 | 0d | 2008-04-08 A | 2008-04-08 A | 100% | start no earlier than 2008-04-08 |
| 97 |  | MO2 | 0d | 2008-04-08 A | 2008-04-08 A | 100% | start no earlier than 2008-04-08 |
| 98 |  | MO10 | 0d | 2008-04-21 A | 2008-04-21 A | 100% | start no earlier than 2008-04-21 |
| 99 | 5.6.4 | **Receive SP** | 15d | 2008-04-04 A | 2008-04-25 A | 100% |  |
| 100 |  | MO1 | 0d | 2008-04-04 A | 2008-04-04 A | 100% | start no earlier than 2008-04-04 |
| 101 |  | MO2 | 0d | 2008-04-25 A | 2008-04-25 A | 100% | start no earlier than 2008-04-25 |
| 102 | 5.7 | **Content integration** | 15d | 2008-04-07 A | 2008-04-25 A | 100% |  |
| 103 |  | RU (MO1-MO4 & MO10) + RU Native speaker | 3d | 2008-04-07 A | 2008-04-09 A | 100% | start no earlier than 2008-04-07 |
| 104 |  | AR (MO1-MO4 & MO10) + AR Native speaker | 3d | 2008-04-14 A | 2008-04-16 A | 100% | start no earlier than 2008-04-14 |
| 105 |  | CH (MO1-MO4 ) + CH Native speaker | 3d | 2008-04-23 A | 2008-04-25 A | 100% | start no earlier than 2008-04-23 |
| 106 |  | SP (MO3 & MO4) | 2d | 2008-04-21 A | 2008-04-22 A | 100% | start no earlier than 2008-04-21 |
| 107 | 5.8 | **Develop & Update documentation** | 29d | 2008-03-24 A | 2008-04-30 A | 100% |  |
| 108 | 5.8.1 | **Forms** | 1d | 2008-04-04 A | 2008-04-04 A | 100% |  |
| 109 |  | DEV.FO.01 | 1d | 2008-04-04 A | 2008-04-04 A | 100% | start no earlier than 2008-04-04 |
| 110 | 5.8.2 | **Procedures** | 8d | 2008-04-14 A | 2008-04-23 A | 100% |  |
| 111 |  | DEV.PR 01-04 | 8d | 2008-04-14 A | 2008-04-23 A | 100% | start no earlier than 2008-04-14 |
| 112 | 5.8.3 | **Instructional** | 15d | 2008-03-24 A | 2008-04-10 A | 100% |  |
| 113 |  | DEV.IN 1 & 2 | 4d | 2008-03-24 A | 2008-03-27 A | 100% | start no earlier than 2008-03-24 |
| 114 |  | DEV.IN.03 | 1d | 2008-04-10 A | 2008-04-10 A | 100% | start no earlier than 2008-04-10 |
| 115 | 5.8.4 | **Reports** | 2d | 2008-04-16 A | 2008-04-17 A | 100% |  |
| 116 |  | DEV.REP.01 | 2d | 2008-04-16 A | 2008-04-17 A | 100% | start no earlier than 2008-04-16 |
| 117 | 5.8.5 | **Template** | 1d | 2008-03-24 A | 2008-03-24 A | 100% |  |
| 118 |  | TM_BCH_documents | 1d | 2008-03-24 A | 2008-03-24 A | 100% | start no earlier than 2008-03-24 |
| 119 | 5.8.6 | **Project Management** | 3d | 2008-04-28 A | 2008-04-30 A | 100% |  |
| 120 |  | TM_BCH_MO_State & TM_BCH_Project Management | 3d | 2008-04-28 A | 2008-04-30 A | 100% | start no earlier than 2008-04-28 |
| 121 | 5.8.7 | **BCH Portal Interface** | 8d | 2008-04-21 A | 2008-04-30 A | 100% |  |
| 122 |  | TM_BCH_Site_Map & Screenshots | 8d | 2008-04-21 A | 2008-04-30 A | 100% | finish no earlier than 2008-04-30 |
| 123 | 5.9 | **Help System Building & Review** | 15d | 2008-04-11 A | 2008-05-02 A | 100% |  |
| 124 |  | Building (1st. Level RU ) | 1d | 2008-04-11 A | 2008-04-11 A | 100% | start no earlier than 2008-04-11 |
| 125 |  | Building (1st. Level AR) | 1d | 2008-04-18 A | 2008-04-18 A | 100% | start no earlier than 2008-04-18 |
| 126 |  | Building (1st. Level CH) | 1d | 2008-04-25 A | 2008-04-25 A | 100% | start no earlier than 2008-04-25 |
| 127 |  | Building (1st. Level SP) | 1d | 2008-04-23 A | 2008-04-23 A | 100% | start no earlier than 2008-04-23 |
| 128 |  | Publish | 0d | 2008-05-02 A | 2008-05-02 A | 100% | start no earlier than 2008-05-02 |
| 129 | 6 | **CYCLE 2.1.0.** | 14d | 2008-05-06 A | 2008-05-23 A | 100% |  |
| 130 | 6.1 | **Software development** | 5d | 2008-05-12 A | 2008-05-16 A | 100% |  |
| 131 |  | Arabic Layaout | 5d | 2008-05-12 A | 2008-05-16 A | 100% | finish no earlier than 2008-05-16 |
| 132 | 6.2 | **Send RA (last CBD MO Review)** | 7d | 2008-05-12 A | 2008-05-21 A | 100% |  |
| 133 | 6.2.1 | **Send RU** | 0d | 2008-05-12 A | 2008-05-12 A | 100% |  |
| 134 |  | MO10 | 0d | 2008-05-12 A | 2008-05-12 A | 100% | start no earlier than 2008-05-12 |
| 135 | 6.2.2 | **Send SP** | 7d | 2008-05-12 A | 2008-05-21 A | 100% |  |
| 136 |  | MO03 | 0d | 2008-05-12 A | 2008-05-12 A | 100% | start no earlier than 2008-05-12 |
| 137 |  | MO04 | 0d | 2008-05-21 A | 2008-05-21 A | 100% | start no earlier than 2008-05-21 |
| 138 |  | MO10 | 0d | 2008-05-19 A | 2008-05-19 A | 100% | start no earlier than 2008-05-19 |
| 139 | 6.3 | **Receive RA (last CBD MO Review)** | 7d | 2008-05-13 A | 2008-05-22 A | 100% |  |
| 140 | 6.3.1 | **Receive RU** | 0d | 2008-05-13 A | 2008-05-13 A | 100% |  |

| ID | WBS | Task | Duration | Start | Finish | Complete | Constraint |
| --- | --- | --- | --- | --- | --- | --- | --- |
| 141 |  | MO4 | 0d | 2008-05-13 A | 2008-05-13 A | 100% | start no earlier than 2008-05-13 |
| 142 | 6.3.2 | **Receive AR** | 0d | 2008-05-22 A | 2008-05-22 A | 100% |  |
| 143 |  | MO3 | 0d | 2008-05-22 A | 2008-05-22 A | 100% | start no earlier than 2008-05-22 |
| 144 |  | MO04 | 0d | 2008-05-22 A | 2008-05-22 A | 100% | start no earlier than 2008-05-22 |
| 145 | 6.3.3 | **Receive SP** | 3d | 2008-05-16 A | 2008-05-21 A | 100% |  |
| 146 |  | MO03 | 0d | 2008-05-16 A | 2008-05-16 A | 100% | start no earlier than 2008-05-16 |
| 147 |  | MO10 | 0d | 2008-05-21 A | 2008-05-21 A | 100% | start no earlier than 2008-05-21 |
| 148 | 6.4 | **Receive CBD CH MO** | 0d | 2008-05-07 A | 2008-05-07 A | 100% |  |
| 149 |  | Received MO10 | 0d | 2008-05-07 A | 2008-05-07 A | 100% | start no earlier than 2008-05-07 |
| 150 | 6.5 | **Content integration** | 2d | 2008-05-15 A | 2008-05-16 A | 100% |  |
| 151 |  | CH (MO10) + Ch Native speaker | 2d | 2008-05-15 A | 2008-05-16 A | 100% | finish no earlier than 2008-05-16 |
| 152 | 6.6 | **Develop & Update documentation** | 14d | 2008-05-06 A | 2008-05-23 A | 100% |  |
| 153 | 6.6.1 | **Reports** | 6d | 2008-05-06 A | 2008-05-13 A | 100% |  |
| 154 |  | DEV.REP.02 | 1d | 2008-05-06 A | 2008-05-06 A | 100% | start no earlier than 2008-05-06 |
| 155 |  | TM_Project_Credit (draft) | 1d | 2008-05-13 A | 2008-05-13 A | 100% | start no earlier than 2008-05-13 |
| 156 | 6.6.2 | **Project Management** | 3d | 2008-05-21 A | 2008-05-23 A | 100% |  |
| 157 |  | TM_BCH_MO_State & TM_BCH_Project Management v2.1.0. | 3d | 2008-05-21 A | 2008-05-23 A | 100% | start no earlier than 2008-05-21 |
| 158 | 6.7 | **Help System Building & Review** | 1d | 2008-05-22 A | 2008-05-23 A | 100% |  |
| 159 |  | Building (Complete 1st. Level RU) | 1d | 2008-05-22 A | 2008-05-22 A | 100% | start no earlier than 2008-05-22 |
| 160 |  | Publish | 0d | 2008-05-23 A | 2008-05-23 A | 100% | start no earlier than 2008-05-23 |
| 161 | 7 | **CYCLE 2.2.0.** | 20d | 2008-05-26 A | 2008-06-20 A | 100% |  |
| 162 | 7.1 | **Receive RA (last CBD MO Review)** | 0d | 2008-05-27 A | 2008-05-27 A | 100% |  |
| 163 | 7.1.1 | **Receive SP** | 0d | 2008-05-27 A | 2008-05-27 A | 100% |  |
| 164 |  | MO04 | 0d | 2008-05-27 A | 2008-05-27 A | 100% | start no earlier than 2008-05-16 |
| 165 | 7.2 | **Content integration** | 5d | 2008-05-26 A | 2008-05-30 A | 100% |  |
| 166 |  | FR - MO1 - MO4 & MO10 | 3d | 2008-05-26 A | 2008-05-28 A | 100% | finish no earlier than 2008-05-16 |
| 167 |  | SP - MO1 - MO4 & MO10 | 3d | 2008-05-28 A | 2008-05-30 A | 100% | start no earlier than 2008-05-28 |
| 168 | 7.3 | **Develop & Update documentation** | 3d | 2008-05-26 A | 2008-05-28 A | 100% |  |
| 169 | 7.3.1 | **Reports** | 1d | 2008-05-27 A | 2008-05-27 A | 100% |  |
| 170 |  | DEV.REP.03 | 1d | 2008-05-27 A | 2008-05-27 A | 100% | start no earlier than 2008-05-06 |
| 171 | 7.3.2 | **Project Management** | 3d | 2008-05-26 A | 2008-05-28 A | 100% |  |
| 172 |  | TM_BCH_MO_State & TM_BCH_Project Management v2.2.0. | 3d | 2008-05-26 A | 2008-05-28 A | 100% | start no earlier than 2008-05-21 |
| 173 | 7.4 | **Help System Building & Review** | 16d | 2008-05-30 A | 2008-06-20 A | 100% |  |
| 174 |  | Building (Complete 1st. Level FR & SP Last SCBD review) | 1d | 2008-05-30 A | 2008-05-30 A | 100% | start no earlier than 2008-05-22 |
| 175 |  | Publish | 15d | 2008-06-02 A | 2008-06-20 A | 100% |  |
| 176 | 8 | **CYCLE 2.3.0.** | 10d | 2008-06-02 A | 2008-06-13 A | 100% |  |
| 177 | 8.1 | **Training Materials** | 5d | 2008-06-06 A | 2008-06-12 A | 100% |  |
| 178 |  | Text gathering | 1d | 2008-06-06 A | 2008-06-06 A | 100% | start no earlier than 2008-06-06 |
| 179 |  | List of materiales | 3d | 2008-06-10 A | 2008-06-12 A | 100% | start no earlier than 2008-06-10 |
| 180 | 8.2 | **BCH Portal Interface** | 2d | 2008-06-04 A | 2008-06-05 A | 100% |  |
| 181 |  | TM_BCH_Site_Map & Screenshots | 2d | 2008-06-04 A | 2008-06-05 A | 100% | finish no earlier than 2008-04-30 |
| 182 | 8.3 | **Send RA** | 7d | 2008-06-02 A | 2008-06-11 A | 100% |  |
| 183 | 8.3.1 | **Send AR** | 7d | 2008-06-02 A | 2008-06-11 A | 100% |  |
| 184 |  | MO03 | 0d | 2008-06-02 A | 2008-06-02 A | 100% | start no earlier than 2008-05-16 |
| 185 |  | MO10 | 0d | 2008-06-11 A | 2008-06-11 A | 100% |  |
| 186 | 8.4 | **Receive RA** | 6d | 2008-06-02 A | 2008-06-10 A | 100% |  |
| 187 | 8.4.1 | **Receive RU (las CBD Review)** | 0d | 2008-06-02 A | 2008-06-02 A | 100% |  |
| 188 |  | MO10 | 0d | 2008-06-02 A | 2008-06-02 A | 100% | start no earlier than 2008-05-16 |
| 189 | 8.4.2 | **Receive AR reviews** | 0d | 2008-06-10 A | 2008-06-10 A | 100% |  |
| 190 |  | MO03 | 0d | 2008-06-10 A | 2008-06-10 A | 100% | start no earlier than 2008-06-10 |
| 191 |  | MO10 | 0d | 2008-06-10 A | 2008-06-10 A | 100% | start no earlier than 2008-06-10 |
| 192 | 8.5 | **Content integration** | 9d | 2008-06-02 A | 2008-06-12 A | 100% |  |
| 193 |  | RU - MO1 - MO4 & MO10 | 4d | 2008-06-02 A | 2008-06-05 A | 100% | finish no earlier than 2008-05-16 |
| 194 |  | AR - MO1 - MO4 & MO10 | 4d | 2008-06-09 A | 2008-06-12 A | 100% | start no earlier than 2008-05-28 |
| 195 | 8.6 | **Review** | 6d | 2008-06-05 A | 2008-06-12 A | 100% |  |
| 196 |  | RU Native speaker | 2d | 2008-06-05 A | 2008-06-06 A | 100% | start no earlier than 2008-06-05 |
| 197 |  | AR Native speaker | 3d | 2008-06-10 A | 2008-06-12 A | 100% | finish no earlier than 2008-06-13 |
| 198 |  | ZH Native speaker | 0d | 2008-06-06 A | 2008-06-06 A | 100% | start no earlier than 2008-06-06 |
| 199 | 8.7 | **Develop & Update documentation** | 9d | 2008-06-02 A | 2008-06-12 A | 100% |  |
| 200 | 8.7.1 | **Reports** | 1d | 2008-06-02 A | 2008-06-02 A | 100% |  |
| 201 |  | DEV.REP.03 | 1d | 2008-06-02 A | 2008-06-02 A | 100% | start no earlier than 2008-05-06 |
| 202 | 8.7.2 | **Project Management** | 3d | 2008-06-10 A | 2008-06-12 A | 100% |  |
| 203 |  | TM_BCH_MO_State & TM_BCH_Project Management v2.3.0. | 3d | 2008-06-10 A | 2008-06-12 A | 100% | start no earlier than 2008-05-21 |
| 204 | 8.8 | **Help System Building & Review** | 2d | 2008-06-12 A | 2008-06-13 A | 100% |  |
| 205 |  | Building (Complete 1st. Level RU & AR Last SCBD review) | 1d | 2008-06-12 A | 2008-06-12 A | 100% | start no earlier than 2008-05-22 |
| 206 |  | Building (2nd level - "BCH" and "The Protocol" in 6 UN languages) | 1d | 2008-06-13 A | 2008-06-13 A | 100% | start no earlier than 2008-06-13 |
| 207 |  | Publish | 0d | 2008-06-13 A | 2008-06-13 A | 100% | start no earlier than 2008-05-23 |
| 208 | 9 | **CYCLE 2.3.1.** | 5d | 2008-06-16 A | 2008-06-20 A | 100% |  |
| 209 | 9.1 | **Moodle** | 5d | 2008-06-16 A | 2008-06-20 A | 100% |  |
| 210 |  | Inventory of training materials | 1d | 2008-06-16 A | 2008-06-16 A | 100% | start no earlier than 2008-06-16 |

| ID | WBS | Task | Duration | Start | Finish | Complete | Constraint |
| --- | --- | --- | --- | --- | --- | --- | --- |
| 211 |  | Text gathering form training materials (6 UN languages) | 1d | 2008-06-18 A | 2008-06-18 A | 100% | start no earlier than 2008-06-06 |
| 212 |  | Create code documents for traning materials ( 6 UN languages) | 2d | 2008-06-19 A | 2008-06-20 A | 100% | start no earlier than 2008-06-19 |
| 213 |  | Convert English / Spanish to pdf documents | 1d | 2008-06-19 A | 2008-06-19 A | 100% | start no earlier than 2008-06-19 |
| 214 |  | English/ Spanish encoding documents | 1d | 2008-06-20 A | 2008-06-20 A | 100% | start no earlier than 2008-06-20 |
| 215 |  | Update Moodle (English & Spanish) | 1d | 2008-06-20 A | 2008-06-20 A | 100% | start no earlier than 2008-06-20 |
| 216 | 9.2 | **Help System Building & Review** | 1d | 2008-06-20 A | 2008-06-20 A | 100% |  |
| 217 |  | Training materials topics were updated, reflecting the changes in moodle (English & Spanish) | 1d | 2008-06-20 A | 2008-06-20 A | 100% | start no earlier than 2008-05-22 |
| 218 |  | Publish | 0d | 2008-06-20 A | 2008-06-20 A | 100% | start no earlier than 2008-05-23 |
| 219 | 10 | **CYCLE 2.3.2.** | 10d | 2008-06-23 A | 2008-07-04 A | 100% |  |
| 220 | 10.1 | **Help System documents** | 4d | 2008-06-23 A | 2008-06-26 A | 100% |  |
| 221 |  | Pdf documents automatically created from Help system (Test version) | 2d | 2008-06-23 A | 2008-06-24 A | 100% | start no earlier than 2008-06-23 |
| 222 |  | Pdf Document reference updated (Test version) | 2d | 2008-06-25 A | 2008-06-26 A | 100% | start no earlier than 2008-06-25 |
| 223 | 10.2 | **Installer** | 2d | 2008-06-26 A | 2008-06-27 A | 100% |  |
| 224 |  | Installer for interactive module 1 (English) | 2d | 2008-06-26 A | 2008-06-27 A | 100% | start no earlier than 2008-06-26 |
| 225 | 10.3 | **Moodle** | 5d | 2008-06-30 A | 2008-07-04 A | 100% |  |
| 226 |  | English & Spanish - training material revision | 1d | 2008-06-30 A | 2008-06-30 A | 100% | start no earlier than 2008-06-06 |
| 227 |  | New structure for English & Spanish - training materials | 2d | 2008-07-01 A | 2008-07-02 A | 100% | start no earlier than 2008-06-16 |
| 228 |  | Update Moodle (English & Spanish) | 2d | 2008-07-03 A | 2008-07-04 A | 100% | start no earlier than 2008-06-20 |
| 229 | 10.3.4 | **Installer** | 3d | 2008-07-01 A | 2008-07-03 A | 100% |  |
| 230 |  | Installer for interactive module 1& 2 (English, Spanish & French) | 3d | 2008-07-01 A | 2008-07-03 A | 100% | start no earlier than 2008-07-01 |
| 231 | 10.4 | **Help System Building & Review** | 1d | 2008-07-04 A | 2008-07-04 A | 100% |  |
| 232 |  | Training materials were updated, reflecting new structure moodle English | 1d | 2008-07-04 A | 2008-07-04 A | 100% | start no earlier than 2008-05-22 |
| 233 |  | Publish | 0d | 2008-07-04 A | 2008-07-04 A | 100% | start no earlier than 2008-05-23 |
| 234 | 11 | **CYCLE 2.3.3.** | 5d | 2008-07-07 A | 2008-07-11 A | 100% |  |
| 235 | 11.1 | **Send RA (transalation Web Training material)** | 0d | 2008-07-07 A | 2008-07-07 A | 100% |  |
| 236 |  | Send AR | 0d | 2008-07-07 A | 2008-07-07 A | 100% | start no earlier than 2008-07-07 |
| 237 |  | Send RU | 0d | 2008-07-07 A | 2008-07-07 A | 100% | start no earlier than 2008-07-07 |
| 238 | 11.2 | **Receive RA (transalation Web Training material)** | 0d | 2008-07-08 A | 2008-07-08 A | 100% |  |
| 239 |  | Receive AR | 0d | 2008-07-08 A | 2008-07-08 A | 100% | start no earlier than 2008-07-08 |
| 240 | 11.3 | **Moodle** | 4d | 2008-07-07 A | 2008-07-10 A | 100% |  |
| 241 |  | French - training material revision | 1d | 2008-07-07 A | 2008-07-07 A | 100% | start no earlier than 2008-07-07 |
| 242 |  | New structure for French - training materials | 1d | 2008-07-08 A | 2008-07-08 A | 100% | start no earlier than 2008-07-08 |
| 243 |  | Translation to french moodle sections | 1d | 2008-07-10 A | 2008-07-10 A | 100% | start no earlier than 2008-07-10 |
| 244 | 11.4 | **Help System documents** | 4d | 2008-07-08 A | 2008-07-11 A | 100% |  |
| 245 | 11.4.1 | **Pdf documents automatically created from Help system** | 4d | 2008-07-08 A | 2008-07-11 A | 100% |  |
| 246 |  | MO01 in 6 UN languages | 4d | 2008-07-08 A | 2008-07-11 A | 100% | start no earlier than 2008-07-08 |
| 247 | 11.5 | **Project Management** | 1d | 2008-07-11 A | 2008-07-11 A | 100% |  |
| 248 |  | TM_BCH_MO_State_pdf & TM_BCH_Project Management v2.3.3. | 1d | 2008-07-11 A | 2008-07-11 A | 100% | start no earlier than 2008-07-11 |
| 249 | 11.6 | **BCH Portal Interface** | 2d | 2008-07-09 A | 2008-07-10 A | 100% |  |
| 250 |  | TM_BCH_Site_Map & Screenshots | 2d | 2008-07-09 A | 2008-07-10 A | 100% | start no earlier than 2008-07-09 |
| 251 | 11.7 | **Help System Building & Review** | 5d | 2008-07-07 A | 2008-07-11 A | 100% |  |
| 252 |  | Training materials were updated, reflecting new structure moodle Spanish | 1d | 2008-07-07 A | 2008-07-07 A | 100% | start no earlier than 2008-07-07 |
| 253 |  | Building (2nd level - "Finding information" in 6 UN languages) | 1d | 2008-07-11 A | 2008-07-11 A | 100% | start no earlier than 2008-07-11 |
| 254 |  | Publish | 0d | 2008-07-11 A | 2008-07-11 A | 100% | start no earlier than 2008-07-11 |
| 255 | 12 | **CYCLE 2.3.4.** | 4d | 2008-07-14 A | 2008-07-17 A | 100% |  |
| 256 | 12.1 | **Receive RA (transalation Web Training material)** | 0d | 2008-07-17 A | 2008-07-17 A | 100% |  |
| 257 |  | Receive Ru | 0d | 2008-07-17 A | 2008-07-17 A | 100% | start no earlier than 2008-07-17 |
| 258 | 12.2 | **Moodle** | 3d | 2008-07-14 A | 2008-07-16 A | 100% |  |
| 259 |  | Arab inventory training material | 1d | 2008-07-14 A | 2008-07-14 A | 100% | start no earlier than 2008-07-14 |
| 260 |  | Russian inventory training material | 1d | 2008-07-15 A | 2008-07-15 A | 100% | start no earlier than 2008-07-15 |
| 261 |  | English & Spanish training material revision | 1d | 2008-07-16 A | 2008-07-16 A | 100% | start no earlier than 2008-07-16 |
| 262 | 12.3 | **Help System documents** | 4d | 2008-07-14 A | 2008-07-17 A | 100% |  |
| 263 | 12.3.1 | **Pdf documents automatically created from Help system** | 4d | 2008-07-14 A | 2008-07-17 A | 100% |  |
| 264 |  | MO01 (En;Fr;Es;Ru) | 4d | 2008-07-14 A | 2008-07-17 A | 100% | start no earlier than 2008-07-14 |
| 265 |  | M002 (En;Fr;Es;Ru;Zh) | 2d | 2008-07-15 A | 2008-07-16 A | 100% | start no earlier than 2008-07-15 |
| 266 | 12.4 | **Project Management** | 1d | 2008-07-17 A | 2008-07-17 A | 100% |  |
| 267 |  | TM_BCH_MO_State_pdf & TM_BCH_Project Management v2.3.4. | 1d | 2008-07-17 A | 2008-07-17 A | 100% | start no earlier than 2008-07-17 |
| 268 | 12.5 | **BCH Portal Interface** | 1d | 2008-07-17 A | 2008-07-17 A | 100% |  |
| 269 |  | TM_BCH_Site_Map & Screenshots | 1d | 2008-07-17 A | 2008-07-17 A | 100% | start no earlier than 2008-07-17 |
| 270 | 12.6 | **Help System Building & Review** | 1d | 2008-07-17 A | 2008-07-17 A | 100% |  |
| 271 |  | Building (2nd level - "Resources" in 6 UN languages) | 1d | 2008-07-17 A | 2008-07-17 A | 100% | start no earlier than 2008-07-17 |
| 272 |  | Publish | 0d | 2008-07-17 A | 2008-07-17 A | 100% | start no earlier than 2008-07-17 |
| 273 | 13 | **CYCLE 3.0.0.** | 5d | 2008-07-21 A | 2008-07-25 A | 100% |  |
| 274 | 13.1 | **Receive RA (Training material for translation)** | 0d | 2008-07-21 A | 2008-07-21 A | 100% |  |
| 275 |  | Receive Fr | 0d | 2008-07-21 A | 2008-07-21 A | 100% | start no earlier than 2008-07-21 |
| 276 | 13.2 | **Moodle** | 5d | 2008-07-21 A | 2008-07-25 A | 100% |  |
| 277 |  | create russian structure | 2d | 2008-07-21 A | 2008-07-22 A | 100% | start no earlier than 2008-07-21 |
| 278 |  | generate pdf russian documents (already translated) | 1d | 2008-07-23 A | 2008-07-23 A | 100% | start no earlier than 2008-07-23 |
| 279 |  | Update with PDF help system automatic generation Mo1-4&10 in En;Fr;Es | 1d | 2008-07-25 A | 2008-07-25 A | 100% | start no earlier than 2008-07-25 |
| 280 |  | Update Guidance documents En,Es | 1d | 2008-07-24 A | 2008-07-24 A | 100% | start no earlier than 2008-07-24 |

| ID | WBS | Task | Duration | Start | Finish | Complete | Total float | Constraint |
| --- | --- | --- | --- | --- | --- | --- | --- | --- |
| 281 |  | Review, checked links in French version | 1d | 2008-07-24 A | 2008-07-24 A | 100% |  | start no earlier than 2008-07-24 |
| 282 | 13.3 | **Help System documents** | 4d | 2008-07-21 A | 2008-07-24 A | 100% |  |  |
| 283 | 13.3.1 | **Pdf documents automatically created from Help system** | 4d | 2008-07-21 A | 2008-07-24 A | 100% |  |  |
| 284 |  | MO03 (En;Fr;Es;Ru) | 3d | 2008-07-21 A | 2008-07-23 A | 100% |  | start no earlier than 2008-07-21 |
| 285 |  | M004 (En;Fr;Es;Ru) | 3d | 2008-07-22 A | 2008-07-24 A | 100% |  | start no earlier than 2008-07-22 |
| 286 |  | MO10(En,Fr,Es,Ru) | 1d | 2008-07-23 A | 2008-07-23 A | 100% |  | start no earlier than 2008-07-23 |
| 287 |  | Update Guidance document (EN& Es) | 1d | 2008-07-24 A | 2008-07-24 A | 100% |  | start no earlier than 2008-07-24 |
| 288 | 13.4 | **Project Management** | 1d | 2008-07-25 A | 2008-07-25 A | 100% |  |  |
| 289 |  | TM_BCH_MO_State_pdf & TM_BCH_Project Management v3.0.0.. | 1d | 2008-07-25 A | 2008-07-25 A | 100% |  | start no earlier than 2008-07-25 |
| 290 | 13.5 | **BCH Portal Interface** | 1d | 2008-07-25 A | 2008-07-25 A | 100% |  |  |
| 291 |  | TM_BCH_Site_Map & Screenshots | 1d | 2008-07-25 A | 2008-07-25 A | 100% |  | start no earlier than 2008-07-25 |
| 292 | 13.6 | **Help System Building & Review** | 2d | 2008-07-24 A | 2008-07-25 A | 100% |  |  |
| 293 |  | Building (2nd level - "Help / Interoperatibility Service" " in 6 UN languages) | 1d | 2008-07-25 A | 2008-07-25 A | 100% |  | start no earlier than 2008-07-25 |
| 294 |  | Building French "Training Materials" | 1d | 2008-07-24 A | 2008-07-24 A | 100% |  | start no earlier than 2008-07-24 |
| 295 |  | Publish | 0d | 2008-07-25 A | 2008-07-25 A | 100% |  | start no earlier than 2008-07-25 |
| 296 | 14 | **CYCLE 3.0.1.** | 4d | 2008-07-28 A | 2008-07-31 A | 100% |  |  |
| 297 | 14.1 | **Receive RA** | 1d | 2008-07-28 A | 2008-07-29 A | 100% |  |  |
| 298 |  | Receive Ru (pdf translation) | 0d | 2008-07-28 A | 2008-07-28 A | 100% |  | start no earlier than 2008-07-28 |
| 299 |  | Receive FR (Training Materials Translations) | 0d | 2008-07-29 A | 2008-07-29 A | 100% |  | start no earlier than 2008-07-29 |
| 300 | 14.2 | **Moodle** | 2d | 2008-07-29 A | 2008-07-30 A | 100% |  |  |
| 301 |  | Upload Rusian pdf documents | 2d | 2008-07-29 A | 2008-07-30 A | 100% |  | start no earlier than 2008-07-29 |
| 302 |  | Review, checked links in Russian version | 1d | 2008-07-30 A | 2008-07-30 A | 100% |  | start no earlier than 2008-07-30 |
| 303 | 14.3 | **Help System documents** | 2d | 2008-07-29 A | 2008-07-30 A | 100% |  |  |
| 304 | 14.3.1 | **Pdf documents automatically created from Help system** | 1d | 2008-07-29 A | 2008-07-29 A | 100% |  |  |
| 305 |  | MO03 (Zh) | 1d | 2008-07-29 A | 2008-07-29 A | 100% |  | start no earlier than 2008-07-29 |
| 306 |  | M004 (Zh) | 1d | 2008-07-29 A | 2008-07-29 A | 100% |  | start no earlier than 2008-07-29 |
| 307 |  | Update Ready Reference #6 (EN& Es) | 1d | 2008-07-30 A | 2008-07-30 A | 100% |  | start no earlier than 2008-07-30 |
| 308 |  | CD Training Materials | 1d | 2008-07-29 A | 2008-07-29 A | 100% |  | start no earlier than 2008-07-29 |
| 309 | 14.4 | **Project Management** | 1d | 2008-07-31 A | 2008-07-31 A | 100% |  |  |
| 310 |  | TM_BCH_MO_State_pdf & TM_BCH_Project Management v3.0.1 | 1d | 2008-07-31 A | 2008-07-31 A | 100% |  | start no earlier than 2008-07-31 |
| 311 | 14.5 | **Help System Building & Review** | 1d | 2008-07-31 A | 2008-07-31 A | 100% |  |  |
| 312 |  | Building Russian "Training Materials" | 1d | 2008-07-31 A | 2008-07-31 A | 100% |  | start no earlier than 2008-07-31 |
| 313 |  | Publish | 0d | 2008-07-31 A | 2008-07-31 A | 100% |  | start no earlier than 2008-07-31 |
| 314 | 15 | **CYCLE 3.1.1.** | 5d? | 2008-08-04 A | 2008-08-08 A | 100% |  |  |
| 315 | 15.1 | **Moodle** | 4d | 2008-08-04 A | 2008-08-07 A | 100% |  |  |
| 316 |  | Upload French pdf documents | 1d | 2008-08-04 A | 2008-08-04 A | 100% |  | start no earlier than 2008-08-04 |
| 317 |  | Review, checked links in French version | 1d | 2008-08-05 A | 2008-08-05 A | 100% |  | start no earlier than 2008-08-05 |
| 318 |  | Create Arabic structure / text | 2d | 2008-08-05 A | 2008-08-06 A | 100% |  | start no earlier than 2008-08-05 |
| 319 |  | Inventory and new code assigned to each document | 1d | 2008-08-07 A | 2008-08-07 A | 100% |  | start no earlier than 2008-08-07 |
| 320 | 15.2 | **Help System documents** | 4d? | 2008-08-04 A | 2008-08-07 A | 100% |  |  |
| 321 | 15.2.1 | **CD Training Materials (ISO Image)** | 4d? | 2008-08-04 A | 2008-08-07 A | 100% |  |  |
| 322 |  | English, French & Spanish | 3d | 2008-08-04 A | 2008-08-06 A | 100% |  | start no earlier than 2008-08-04 |
| 323 |  | Review CD training materials & link to the BCH help System | 1d? | 2008-08-07 A | 2008-08-07 A | 100% |  | start no earlier than 2008-08-07 |
| 324 | 15.3 | **Project Management** | 1d | 2008-08-08 A | 2008-08-08 A | 100% |  |  |
| 325 |  | TM_BCH_MO_State_pdf & TM_BCH_Project Management v3.1.1 | 1d | 2008-08-08 A | 2008-08-08 A | 100% |  | start no earlier than 2008-08-08 |
| 326 | 15.4 | **Help System Building & Review** | 1d | 2008-08-08 A | 2008-08-08 A | 100% |  |  |
| 327 |  | Building French "Training Materials" & link to ISO images EN,SP,FR | 1d | 2008-08-08 A | 2008-08-08 A | 100% |  | start no earlier than 2008-08-08 |
| 328 |  | Publish | 0d | 2008-08-08 A | 2008-08-08 A | 100% |  | start no earlier than 2008-08-08 |
| 329 | 16 | **CYCLE 3.2.0.** | 5d | 2008-08-11 A | 2008-08-15 | 70% | 0d |  |
| 330 | 16.1 | **Receive RA (Training material for translation)** | 0d | 2008-08-14 A | 2008-08-14 A | 100% |  |  |
| 331 |  | Receive Ru | 0d | 2008-08-14 A | 2008-08-14 A | 100% |  | start no earlier than 2008-07-21 |
| 332 | 16.2 | **Moodle** | 2d | 2008-08-11 A | 2008-08-12 A | 100% |  |  |
| 333 |  | Generate pdf arabic & Ru documents | 1d | 2008-08-11 A | 2008-08-11 A | 100% |  | start no earlier than 2008-07-21 |
| 334 |  | upload Ar/Ru documents | 1d | 2008-08-11 A | 2008-08-11 A | 100% |  | start no earlier than 2008-07-23 |
| 335 |  | Review, checked links | 1d | 2008-08-12 A | 2008-08-12 A | 100% |  | start no earlier than 2008-07-24 |
| 336 | 16.3 | **Help System documents** | 2d | 2008-08-13 A | 2008-08-14 | 67% | 1d |  |
| 337 |  | Reviewed and improved Pdf documents automatically created from Help system | 2d | 2008-08-13 A | 2008-08-14 A | 100% |  |  |
| 338 | 16.3.2 | **Update document** | 1d | 2008-08-14 | 2008-08-14 |  | 1d |  |
| 339 |  | Ready Reference #13 updated in (En,Sp &Fr) | 1d | 2008-08-14 | 2008-08-14 |  | 1d | start no earlier than 2008-08-14 |
| 340 | 16.4 | **Project Management** | 2d | 2008-08-14 A | 2008-08-15 | 50% | 0d |  |
| 341 |  | TM_BCH_Training_Material _State | 1d | 2008-08-14 A | 2008-08-14 A | 100% |  | start no earlier than 2008-07-25 |
| 342 |  | TM_BCH_Project Management v3.2.0. & release note | 1d | 2008-08-15 | 2008-08-15 |  | 0d | start no earlier than 2008-08-15 |
| 343 | 16.5 | **Help Studio** | 1d | 2008-08-13 | 2008-08-13 |  | 2d |  |
| 344 |  | New version installed | 1d | 2008-08-13 | 2008-08-13 |  | 2d | start no earlier than 2008-08-13 |
| 345 |  | Templates & plug-ins (were reviewed) | 0d | 2008-08-13 | 2008-08-13 |  | 3d | start no earlier than 2008-08-13 |
| 346 | 16.6 | **Help System Building & Review** | 1d | 2008-08-15 A | 2008-08-15 A | 100% |  |  |
| 347 |  | Building Arabic "Training Materials" | 1d | 2008-08-15 A | 2008-08-15 A | 100% |  | start no earlier than 2008-07-24 |
| 348 |  | Publish | 0d | 2008-08-15 A | 2008-08-15 A | 100% |  | start no earlier than 2008-07-25 |

## Version 2 (saved 2008-08-27)

Note of the change: git-svn-id: https://subversion.cbd.int/svn/repo/Bch/Help@1577 ca237ed5-24d0-bc44-ad4d-3f151b82840b

Last finish 2008-08-15 → 2008-08-22 (+7d). Complete tasks 210 → 228.

Added:

| ID | Task | Duration | Start | Finish | Constraint |
| --- | --- | --- | --- | --- | --- |
| 349 | **CYCLE 3.3.0.** | 5d | 2008-08-18 A | 2008-08-22 A |  |
| 350 | **Send RA (transalation Web Training material)** | 0d | 2008-08-20 A | 2008-08-20 A |  |
| 351 | Send Ar | 0d | 2008-08-20 A | 2008-08-20 A | start no earlier than 2008-08-20 |
| 352 | **Receive RA (Training material for translation)** | 0d | 2008-08-22 A | 2008-08-22 A |  |
| 353 | Receive Ar | 0d | 2008-08-22 A | 2008-08-22 A | start no earlier than 2008-07-21 |
| 354 | **Moodle** | 3d | 2008-08-18 A | 2008-08-20 A |  |
| 355 | Generate pdf Ru documents (RR # 8 & 13) | 1d | 2008-08-18 A | 2008-08-18 A | start no earlier than 2008-07-21 |
| 356 | upload Ar/Ru documents | 1d | 2008-08-19 A | 2008-08-19 A | start no earlier than 2008-07-23 |
| 357 | Review, checked links | 1d | 2008-08-20 A | 2008-08-20 A | start no earlier than 2008-07-24 |
| 358 | **Help system document** | 5d | 2008-08-18 A | 2008-08-22 A |  |
| 359 | **Procedure & documentation** | 5d | 2008-08-18 A | 2008-08-22 A |  |
| 360 | DEV.PR. 05, 007 & 08 | 3d | 2008-08-18 A | 2008-08-20 A | start no earlier than 2008-08-20 |
| 361 | Ready Reference #13, 8 updated in (Ru) | 1d | 2008-08-22 A | 2008-08-22 A | start no earlier than 2008-08-22 |
| 362 | **CD Training Materials (ISO Image)** | 2d | 2008-08-21 A | 2008-08-22 A |  |
| 363 | Russian | 1d | 2008-08-21 A | 2008-08-21 A |  |
| 364 | Review CD training materials & link to the BCH help System | 1d | 2008-08-22 A | 2008-08-22 A |  |
| 365 | **Help system** | 1d | 2008-08-21 A | 2008-08-21 A |  |
| 366 | Topic search was fixed (russian language) | 1d | 2008-08-21 A | 2008-08-21 A | start no earlier than 2008-08-21 |
| 367 | **Project Management** | 1d | 2008-08-21 A | 2008-08-21 A |  |
| 368 | TM_BCH_Training_Material _State | 1d | 2008-08-21 A | 2008-08-21 A | start no earlier than 2008-07-25 |
| 369 | TM_BCH_Project Management v3.3.0. & release note | 1d | 2008-08-21 A | 2008-08-21 A | start no earlier than 2008-08-21 |
| 370 | **Help System Building & Review** | 1d | 2008-08-22 A | 2008-08-22 A |  |
| 371 | Building Ru | 1d | 2008-08-22 A | 2008-08-22 A | start no earlier than 2008-07-24 |
| 372 | Publish | 0d | 2008-08-22 A | 2008-08-22 A | start no earlier than 2008-07-25 |

Changed:

| ID | Task | Start | Finish | Complete | Total float |
| --- | --- | --- | --- | --- | --- |
| 329 | **CYCLE 3.2.0.** |  | 2008-08-15 A | 70% → 100% | 0d → none |
| 336 | **Help System documents** |  | 2008-08-14 A | 67% → 100% | 1d → none |
| 338 | **Update document** | 2008-08-14 A | 2008-08-14 A | 0% → 100% | 1d → none |
| 339 | Ready Reference #13 updated in (En,Sp &Fr) | 2008-08-14 A | 2008-08-14 A | 0% → 100% | 1d → none |
| 340 | **Project Management** |  | 2008-08-15 A | 50% → 100% | 0d → none |
| 342 | TM_BCH_Project Management v3.2.0. & release note | 2008-08-15 A | 2008-08-15 A | 0% → 100% | 0d → none |
| 343 | **Help Studio** | 2008-08-13 A | 2008-08-13 A | 0% → 100% | 2d → none |
| 344 | New version installed | 2008-08-13 A | 2008-08-13 A | 0% → 100% | 2d → none |
| 345 | Templates & plug-ins (were reviewed) | 2008-08-13 A | 2008-08-13 A | 0% → 100% | 3d → none |

## Version 3 (saved 2008-08-29)

Note of the change: git-svn-id: https://subversion.cbd.int/svn/repo/Bch/Help@1653 ca237ed5-24d0-bc44-ad4d-3f151b82840b

Last finish 2008-08-22 → 2008-08-29 (+7d). Complete tasks 228 → 235.

Added:

| ID | Task | Duration | Start | Finish | Constraint |
| --- | --- | --- | --- | --- | --- |
| 369 | **CYCLE 3.4.0.** | 4d | 2008-08-26 A | 2008-08-29 |  |
| 370 | **Receive RA (Training material for translation)** | 0d | 2008-08-26 A | 2008-08-26 A |  |
| 371 | Receive Ar | 0d | 2008-08-26 A | 2008-08-26 A | start no earlier than 2008-08-26 |
| 372 | **Moodle** | 1d | 2008-08-26 A | 2008-08-26 A |  |
| 373 | Generate pdf AR documents (GD & CC 01-08) | 1d | 2008-08-26 A | 2008-08-26 A | start no earlier than 2008-08-26 |
| 374 | upload Ar documents | 1d | 2008-08-26 A | 2008-08-26 A | start no earlier than 2008-08-26 |
| 375 | Review, checked links | 1d | 2008-08-26 A | 2008-08-26 A | start no earlier than 2008-08-26 |
| 376 | **Help system document** | 3d | 2008-08-26 A | 2008-08-28 |  |
| 377 | **Procedure & documentation** | 2d | 2008-08-27 A | 2008-08-28 |  |
| 378 | DEV.PR. 06 & 09 | 2d | 2008-08-27 A | 2008-08-28 A | start no earlier than 2008-08-27 |
| 379 | Updated DEV.REP 02 | 1d | 2008-08-28 | 2008-08-28 | start no earlier than 2008-08-28 |
| 380 | **Montevideo Wokshop** | 3d | 2008-08-26 A | 2008-08-28 A |  |
| 381 | PPT & agenda | 3d | 2008-08-26 A | 2008-08-28 A | start no earlier than 2008-08-26 |
| 382 | **Project Management** | 1d | 2008-08-29 A | 2008-08-29 A |  |
| 383 | TM_BCH_Training_Material _State | 1d | 2008-08-29 A | 2008-08-29 A | start no earlier than 2008-08-29 |
| 384 | TM_BCH_Project Management v3.4.0. & release note | 1d | 2008-08-29 A | 2008-08-29 A | start no earlier than 2008-08-29 |
| 385 | **Help System Building & Review** | 1d | 2008-08-29 A | 2008-08-29 A |  |
| 386 | Building Ar | 1d | 2008-08-29 A | 2008-08-29 A | start no earlier than 2008-08-29 |
| 387 | Publish | 0d | 2008-08-29 A | 2008-08-29 A | start no earlier than 2008-08-29 |

Removed: 361 Ready Reference #13, 8 updated in (Ru); 362 CD Training Materials (ISO Image); 363 Russian; 364 Review CD training materials & link to the BCH help System

Changed:

| ID | Task | Finish | Duration |
| --- | --- | --- | --- |
| 358 | **Help system document** | 2008-08-22 A → 2008-08-21 A (-1d) | 5d → 4d |
| 359 | **Procedure & documentation** | 2008-08-22 A → 2008-08-20 A (-2d) | 5d → 3d |
